# 集控III区高级应用

Schedule from a web Gantt chart, 2024-05-06 to 2025-06-30.
Saturdays and Sundays are off

## Schedule

| ID | WBS | Task | Duration | Start | Finish | Status |
| --- | --- | --- | --- | --- | --- | --- |
| 2 | 1 | **一期** | 95d | 2024-05-06 | 2024-09-13 |  |
| 3 | 1.1 | V0.1 架构搭建与需求梳理 | 5d | 2024-05-06 | 2024-05-10 |  |
| 4 | 1.2 | V1.1.0 实时监视模块(区域监视+场站监视)与指标计算组件迁移 | 10d | 2024-05-13 | 2024-05-24 |  |
| 5 | 1.3 | V1.1.1 实时监视(设备监视) | 10d | 2024-05-27 | 2024-06-07 |  |
| 6 | 1.4 | V1.1.2 XXXX | 10d | 2024-06-10 | 2024-06-21 |  |
| 7 | 1.5 | V1.1.3 XXXX | 10d | 2024-06-24 | 2024-07-05 |  |
| 8 | 1.6 | V1.1.4 XXXX | 10d | 2024-07-08 | 2024-07-19 |  |
| 9 | 1.7 | V1.1.5 XXXX | 10d | 2024-07-22 | 2024-08-02 |  |
| 10 | 1.8 | V1.7 XXXX | 10d | 2024-08-05 | 2024-08-16 |  |
| 11 | 1.9 | V1.8 XXXX | 10d | 2024-08-19 | 2024-08-30 |  |
| 12 | 1.10 | V1.9 XXXX | 10d | 2024-09-02 | 2024-09-13 |  |
| 13 | 1.11 | V | 1d | 2024-09-02 | 2024-09-02 |  |
| 14 | 2 | 二期 | 107d | 2024-11-01 | 2025-03-31 | waiting |
| 15 | 3 | 三期 | 65d | 2025-04-01 | 2025-06-30 | waiting |
